# Information System Schedule, MW-PPPC-546386-GO-RFB

How a schedule from MS Project XML changed from version to version. A marks actual dates.

## Version 1 (saved 2026-10-06)

| ID | WBS | Task | Duration | Start | Finish | Predecessors |
| --- | --- | --- | --- | --- | --- | --- |
| 1 |  | Effective Date | 0w | 2027-01-04 | 2027-01-04 |  |
| 2 | 2 | **1 Project mobilization and planning** | 2w | 2027-01-04 | 2027-01-15 |  |
| 3 |  | Mobilize the Information System team | 1w | 2027-01-04 | 2027-01-08 | 1 |
| 4 |  | Confirm Purchaser inputs and baseline the schedule | 2w | 2027-01-04 | 2027-01-15 | 1 |
| 5 |  | Discovery: NRIS documentation, current process and site walkthroughs | 2w | 2027-01-04 | 2027-01-15 | 1 |
| 6 |  | Order long-lead equipment and ICT infrastructure | 1w | 2027-01-11 | 2027-01-15 | 3 |
| 7 |  | Recommended trainee numbers and prerequisites issued to NRB | 0w | 2027-01-15 | 2027-01-15 | 4 |
| 8 | 3 | **2 Design and detailed planning** | 4w | 2027-01-18 | 2027-02-12 |  |
| 9 |  | Discovery: NRIS test data profiling and Discovery Report | 2w | 2027-01-18 | 2027-01-29 | 5, 96, 97 |
| 10 |  | ICT Site Preparation Guide | 2w | 2027-01-18 | 2027-01-29 | 5 |
| 11 |  | ICT Site Preparation Guide issued to the facility works | 0w | 2027-01-29 | 2027-01-29 | 10 |
| 12 |  | Network requirements for the Government Wide Area Network | 1w | 2027-01-25 | 2027-01-29 | 10SS+1w |
| 13 |  | High-Level Design | 2w | 2027-01-18 | 2027-01-29 | 5 |
| 14 |  | Low-Level Design | 2w | 2027-01-25 | 2027-02-05 | 13SS+1w |
| 15 |  | Interface Control Documents, agreed with NRB developers | 3w | 2027-01-18 | 2027-02-05 | 5 |
| 16 |  | Security Design Documentation and certificate profile with e-Government | 3w | 2027-01-18 | 2027-02-05 | 5 |
| 17 |  | Card layout and card identifier, joint redesign with NRB | 3w | 2027-01-18 | 2027-02-05 | 5 |
| 18 |  | Future-state processes and draft Standard Operating Procedures | 3w | 2027-01-18 | 2027-02-05 | 5 |
| 19 |  | Design submitted for approval | 0w | 2027-02-05 | 2027-02-05 | 9, 12, 14, 15, 16, 17, 18 |
| 20 |  | Design review with NRB | 1w | 2027-02-08 | 2027-02-12 | 19 |
| 21 |  | Detailed Design Approval | 0w | 2027-02-12 | 2027-02-12 | 20 |
| 22 | 4 | **3 Procurement and manufacturing** | 21w | 2027-01-18 | 2027-06-11 |  |
| 23 |  | Equipment manufacture, started on order: two personalization and two mailing systems | 10w | 2027-01-18 | 2027-03-26 | 6 |
| 24 |  | Options fixed at design approval fitted to the equipment | 2w | 2027-03-15 | 2027-03-26 | 21FS+4w, 23SS+8w |
| 25 |  | Equipment ready for factory acceptance | 0w | 2027-03-26 | 2027-03-26 | 23, 24 |
| 26 |  | Blank cards, first production run: qualification and factory acceptance stock | 7w | 2027-02-15 | 2027-04-02 | 21, 98 |
| 27 |  | Qualification cards delivered to the equipment factory | 0w | 2027-04-09 | 2027-04-09 | 26FS+1w |
| 28 |  | Factory acceptance test procedure issued to NRB for approval | 0w | 2027-04-09 | 2027-04-09 | 21FS+8w |
| 29 |  | Blank cards, first delivery of not less than 500,000 | 5w | 2027-04-05 | 2027-05-07 | 26 |
| 30 |  | Blank cards, remaining 1,500,000 in shipments of not less than 500,000 | 5w | 2027-05-10 | 2027-06-11 | 29 |
| 31 |  | ICT infrastructure manufacture and delivery, ordered at mobilization | 11w | 2027-01-18 | 2027-04-02 | 6 |
| 32 |  | Application build: components defined by the Technical Requirements, from design start | 12w | 2027-01-18 | 2027-04-09 | 5 |
| 33 |  | Application build: NRIS-facing and signing components, after design approval | 10w | 2027-02-15 | 2027-04-23 | 21, 99, 100 |
| 34 |  | NRIS interface simulators from the Interface Control Documents | 2w | 2027-02-15 | 2027-02-26 | 21 |
| 35 |  | Production side of the NRIS interface, tested against simulators | 8w | 2027-03-01 | 2027-04-23 | 34 |
| 36 |  | Clearing agent appointed | 0w | 2027-03-26 | 2027-03-26 | 21FS+6w |
| 37 |  | Customs documentation prepared | 4w | 2027-03-29 | 2027-04-23 | 36 |
| 38 | 5 | **4 Facility renovation (facility works)** | 12w | 2027-02-15 | 2027-05-07 |  |
| 39 |  | Facility renovation, under the facility works, server room first | 12w | 2027-02-15 | 2027-05-07 | 11, 21 |
| 40 |  | Server room handed over: sealed, powered through its UPS, cooled and cabled | 0w | 2027-04-09 | 2027-04-09 | 39SS+8w, 103 |
| 41 |  | Readiness inspection of the production floor | 1w | 2027-05-03 | 2027-05-07 | 39SS+11w |
| 42 |  | Production floor ready for installation | 0w | 2027-05-07 | 2027-05-07 | 39, 41 |
| 43 | 6 | **5 Factory acceptance testing** | 1w | 2027-04-26 | 2027-04-30 |  |
| 44 |  | Factory acceptance of the equipment on production card stock, NRB delegation present | 1w | 2027-04-26 | 2027-04-30 | 25, 26, 27, 28, 102, 1FS+16w |
| 45 |  | Printer Control Service proven against the equipment software | 1w | 2027-04-26 | 2027-04-30 | 25, 32, 1FS+16w |
| 46 |  | NRB technical staff trained at the factory | 1w | 2027-04-26 | 2027-04-30 | 25, 1FS+16w |
| 47 |  | Successful FAT | 0w | 2027-04-30 | 2027-04-30 | 44, 45, 46 |
| 48 | 7 | **6 Shipping and customs clearance** | 8w | 2027-05-03 | 2027-06-25 |  |
| 49 |  | Shipping of the personalization and mailing equipment | 2w | 2027-05-03 | 2027-05-14 | 47 |
| 50 |  | Customs clearance and delivery to NRB | 1w | 2027-05-17 | 2027-05-21 | 49, 37, 107 |
| 51 |  | Equipment delivered on site | 0w | 2027-05-21 | 2027-05-21 | 50 |
| 52 |  | First card delivery shipped, cleared and delivered to NRB | 2w | 2027-05-10 | 2027-05-21 | 29, 107 |
| 53 |  | First card delivery on site | 0w | 2027-05-21 | 2027-05-21 | 52 |
| 54 |  | Remaining card shipments cleared and delivered to NRB | 2w | 2027-06-14 | 2027-06-25 | 30, 107 |
| 55 |  | All 2,000,000 cards on site, before commissioning | 0w | 2027-06-25 | 2027-06-25 | 54 |
| 56 | 8 | **7 Installation and site acceptance testing** | 12w | 2027-04-12 | 2027-07-02 |  |
| 57 |  | ICT infrastructure delivered to site, inspected and racked | 1w | 2027-04-12 | 2027-04-16 | 31, 40 |
| 58 |  | NRB technical staff shadow installation and commissioning | 12w | 2027-04-12 | 2027-07-02 | 57SS, 104 |
| 59 |  | Platform build: application and database clusters, storage array, directory, database, security, non-production environments | 1w | 2027-04-19 | 2027-04-23 | 57 |
| 60 |  | Hardware security modules installed, key ceremony, certificate signing request to e-Government | 1w | 2027-04-19 | 2027-04-23 | 57 |
| 61 |  | Secondary environment deployed at Blantyre and replication established | 3w | 2027-04-19 | 2027-05-07 | 57, 105, 106 |
| 62 |  | Application deployed and integrated with the directory | 1w | 2027-04-26 | 2027-04-30 | 59, 32, 33 |
| 63 |  | Pre-Commissioning Test Program submitted to NRB for approval | 0w | 2027-04-30 | 2027-04-30 | 57FS+2w |
| 64 |  | Early integration with NRIS: interfaces tested as NRB delivers them | 5w | 2027-05-03 | 2027-06-04 | 62, 35, 108 |
| 65 |  | Integration with NRIS completed against NRB's delivered side | 2w | 2027-06-07 | 2027-06-18 | 111, 62, 35, 108 |
| 66 |  | Pre-commissioning tests of the ICT estate, Table A 4, 5, 8 and 13 | 2w | 2027-05-10 | 2027-05-21 | 62, 61, 63 |
| 67 |  | Performance testing of the software, and security testing | 2w | 2027-05-17 | 2027-05-28 | 62, 66SS+1w |
| 68 |  | Equipment inspected on delivery, unpacked and placed | 1w | 2027-05-24 | 2027-05-28 | 51, 42 |
| 69 |  | Equipment installed and commissioned by the manufacturer's engineers | 3w | 2027-05-24 | 2027-06-11 | 51, 42 |
| 70 |  | Critical Spare Parts List submitted to NRB for approval | 0w | 2027-06-18 | 2027-06-18 | 51FS+4w |

| ID | WBS | Task | Duration | Start | Finish | Predecessors |
| --- | --- | --- | --- | --- | --- | --- |
| 71 |  | User acceptance testing with NRIS stakeholders | 2w | 2027-06-14 | 2027-06-25 | 62, 65SS+1w |
| 72 |  | Security Operations Center integrated with NRB's Security Operations Center | 1w | 2027-06-21 | 2027-06-25 | 62, 114 |
| 73 |  | Independent penetration testing of the full deployed configuration | 1w | 2027-06-14 | 2027-06-18 | 69, 62 |
| 74 |  | Pre-commissioning tests of the equipment and integration, Table A 1, 6, 7, 9 to 12, 14 and 16 | 3w | 2027-06-14 | 2027-07-02 | 69, 63, 65FF+2w |
| 75 |  | Pilot production of 500 to 1,000 test cards, not issued to citizens | 1w | 2027-06-28 | 2027-07-02 | 69, 71, 65, 113, 53 |
| 76 |  | Installation and SAT complete | 0w | 2027-07-02 | 2027-07-02 | 66, 74, 67, 73, 75, 61 |
| 77 | 9 | **8 Training and knowledge transfer** | 4w | 2027-06-21 | 2027-07-16 |  |
| 78 |  | User training, groups one and two, one for each shift | 2w | 2027-06-21 | 2027-07-02 | 69FS+1w, 109, 1FS+24w |
| 79 |  | Technical training, NRB technical trainers co-delivering | 2w | 2027-06-28 | 2027-07-09 | 78SS+1w |
| 80 |  | Management training | 1w | 2027-06-28 | 2027-07-02 | 78SS+1w |
| 81 |  | User training, cover group, delivered by NRB trainers under observation | 2w | 2027-07-05 | 2027-07-16 | 78 |
| 82 |  | Training completed | 0w | 2027-07-16 | 2027-07-16 | 78, 79, 80, 81 |
| 83 | 10 | **9 System commissioning and performance testing** | 4w | 2027-07-05 | 2027-07-30 |  |
| 84 |  | Operational acceptance tests 1 to 12, 14 and 15 | 1w | 2027-07-05 | 2027-07-09 | 76, 55 |
| 85 |  | Sustained production stability and multi-shift operation, tests 2 and 13 | 2w | 2027-07-05 | 2027-07-16 | 76 |
| 86 |  | Operational independence, test 16 | 1w | 2027-07-12 | 2027-07-16 | 78, 79 |
| 87 |  | Final acceptance demonstration, test 17, ten working day observation | 2w | 2027-07-19 | 2027-07-30 | 84, 85, 86, 101 |
| 88 |  | System commissioned | 0w | 2027-07-30 | 2027-07-30 | 87 |
| 89 |  | Warranty and support documentation delivered | 0w | 2027-07-30 | 2027-07-30 | 87 |
| 90 | 11 | **10 Handover, go-live and closure** | 2w | 2027-08-02 | 2027-08-13 |  |
| 91 |  | As-built documentation, prepared progressively from week 27, finalized | 2w | 2027-08-02 | 2027-08-13 | 88 |
| 92 |  | Transfer of Security Operations Center operation to NRB | 2w | 2027-08-02 | 2027-08-13 | 88, 72 |
| 93 |  | Stabilization: resident engineers on every shift, daily review with NRB | 2w | 2027-08-02 | 2027-08-13 | 88, 115 |
| 94 |  | Full handover and go-live | 0w | 2027-08-13 | 2027-08-13 | 91, 92, 93 |
| 95 | 12 | **Dependencies on the Purchaser and other parties** | 24w | 2027-01-11 | 2027-06-25 |  |
| 96 |  | NRIS documentation received (NRB) | 0w | 2027-01-08 | 2027-01-08 | 1FS+1w |
| 97 |  | Access to the NRIS test environment for profiling (NRB) | 0w | 2027-01-15 | 2027-01-15 | 1FS+2w |
| 98 |  | Card design decisions (NRB) | 0w | 2027-02-05 | 2027-02-05 | 1FS+5w |
| 99 |  | QR code specification (NRB) | 0w | 2027-02-05 | 2027-02-05 | 1FS+5w |
| 100 |  | Certificate profile and signing request procedure (e-Government) | 0w | 2027-02-05 | 2027-02-05 | 1FS+5w |
| 101 |  | Observation period for the final acceptance demonstration agreed (NRB) | 0w | 2027-02-05 | 2027-02-05 | 1FS+5w |
| 102 |  | Factory acceptance delegation nominated (NRB) | 0w | 2027-03-19 | 2027-03-19 | 1FS+11w |
| 103 |  | Dedicated electrical connection to the facility live (NRB) | 0w | 2027-03-26 | 2027-03-26 | 1FS+12w |
| 104 |  | Technical trainees nominated (NRB) | 0w | 2027-04-09 | 2027-04-09 | 1FS+14w |
| 105 |  | Government Wide Area Network provisioned (NRB, e-Government) | 0w | 2027-04-16 | 2027-04-16 | 1FS+15w |
| 106 |  | Access, floor space, power and cooling at the Blantyre data center (NRB) | 0w | 2027-04-16 | 2027-04-16 | 1FS+15w |
| 107 |  | Purchaser documents for customs clearance (NRB) | 0w | 2027-04-23 | 2027-04-23 | 1FS+16w |
| 108 |  | Connectivity from the facility to the NRIS test environment (NRB) | 0w | 2027-04-30 | 2027-04-30 | 1FS+17w |
| 109 |  | User trainees nominated (NRB) | 0w | 2027-05-14 | 2027-05-14 | 1FS+19w |
| 110 |  | NRIS side of the interface (NRB developers) | 16w | 2027-02-15 | 2027-06-04 | 21, 15 |
| 111 |  | NRIS side of the interface ready for integration (NRB) | 0w | 2027-06-04 | 2027-06-04 | 110 |
| 112 |  | Document Signer certificate issue (e-Government) | 3w | 2027-04-26 | 2027-05-14 | 60 |
| 113 |  | Document Signer certificate issued (e-Government) | 0w | 2027-05-14 | 2027-05-14 | 112 |
| 114 |  | NRB Security Operations Center integration details (NRB) | 0w | 2027-06-18 | 2027-06-18 | 1FS+24w |
| 115 |  | Remote support access arranged (NRB, e-Government) | 0w | 2027-06-25 | 2027-06-25 | 1FS+25w |

## Version 2 (saved 2026-10-07)

Note of the change: Connect the machine lines through the edge switch stack

Last finish stays 2027-08-13.

Changed:

| ID | Task | Other |
| --- | --- | --- |
| 60 | Hardware security module installed at the primary site, key ceremony, certificate signing request to e-Government | was named Hardware security modules installed, key ceremony, certificate signing request to e-Government |
| 61 | Secondary environment deployed at Blantyre, its hardware security module enrolled, and replication established | was named Secondary environment deployed at Blantyre and replication established |
