# Integrated Programme of Works, MW-PPPC-546386-GO-RFB

How a schedule from MS Project XML changed from version to version. A marks actual dates.

## Version 1 (saved 2026-10-08)

Note of the change: Add the integrated programme of works (SN10)

| ID | WBS | Task | Duration | Start | Finish | Predecessors |
| --- | --- | --- | --- | --- | --- | --- |
| 1 |  | Effective Date | 0w | 2027-01-04 | 2027-01-04 |  |
| 2 | 2 | **Project management and coordination** | 32w | 2027-01-04 | 2027-08-13 |  |
| 3 |  | Project management, progress reporting and single point of contact with NRB | 32w | 2027-01-04 | 2027-08-13 | 1 |
| 4 |  | Coordination with end users and government stakeholders in Malawi | 32w | 2027-01-04 | 2027-08-13 | 1 |
| 5 | 3 | **1 Project mobilization and planning** | 2w | 2027-01-04 | 2027-01-15 |  |
| 6 |  | Mobilize the Information System team | 1w | 2027-01-04 | 2027-01-08 | 1 |
| 7 |  | Confirm Purchaser inputs and baseline the schedule | 2w | 2027-01-04 | 2027-01-15 | 1 |
| 8 |  | Discovery: NRIS documentation, current process and site walkthroughs | 2w | 2027-01-04 | 2027-01-15 | 1 |
| 9 |  | Site survey and assessment of the existing facility: dimensions, structure, electrical load and environment | 2w | 2027-01-04 | 2027-01-15 | 1 |
| 10 |  | Order long-lead equipment and ICT infrastructure | 1w | 2027-01-11 | 2027-01-15 | 6 |
| 11 |  | Recommended trainee numbers and prerequisites issued to NRB | 0w | 2027-01-15 | 2027-01-15 | 7 |
| 12 | 4 | **2 Design and detailed planning** | 4w | 2027-01-18 | 2027-02-12 |  |
| 13 |  | Discovery: NRIS test data profiling and Discovery Report | 2w | 2027-01-18 | 2027-01-29 | 8, 118, 119 |
| 14 |  | ICT Site Preparation Guide | 2w | 2027-01-18 | 2027-01-29 | 8 |
| 15 |  | ICT Site Preparation Guide issued to the facility works | 0w | 2027-01-29 | 2027-01-29 | 14 |
| 16 |  | Network requirements for the Government Wide Area Network | 1w | 2027-01-25 | 2027-01-29 | 14SS+1w |
| 17 |  | High-Level Design | 2w | 2027-01-18 | 2027-01-29 | 8 |
| 18 |  | Low-Level Design | 2w | 2027-01-25 | 2027-02-05 | 17SS+1w |
| 19 |  | Interface Control Documents, agreed with NRB developers | 3w | 2027-01-18 | 2027-02-05 | 8 |
| 20 |  | Security Design Documentation and certificate profile with e-Government | 3w | 2027-01-18 | 2027-02-05 | 8 |
| 21 |  | Card layout and card identifier, joint redesign with NRB | 3w | 2027-01-18 | 2027-02-05 | 8 |
| 22 |  | Future-state processes and draft Standard Operating Procedures | 3w | 2027-01-18 | 2027-02-05 | 8 |
| 23 |  | Facility design: architectural, electrical and mechanical drawings, layout plans, power and cooling design, bill of quantities | 3w | 2027-01-18 | 2027-02-05 | 9, 15FF+1w |
| 24 |  | Design submitted for approval | 0w | 2027-02-05 | 2027-02-05 | 13, 16, 18, 19, 20, 21, 22, 23 |
| 25 |  | Design review with NRB | 1w | 2027-02-08 | 2027-02-12 | 24 |
| 26 |  | Statutory approval of the structural and electrical designs, coordinated by NRB | 1w | 2027-02-08 | 2027-02-12 | 23 |
| 27 |  | Detailed Design Approval | 0w | 2027-02-12 | 2027-02-12 | 25 |
| 28 | 5 | **3 Procurement and manufacturing** | 21w | 2027-01-18 | 2027-06-11 |  |
| 29 |  | Equipment manufacture, started on order: two personalization and two mailing systems | 10w | 2027-01-18 | 2027-03-26 | 10 |
| 30 |  | Options fixed at design approval fitted to the equipment | 2w | 2027-03-15 | 2027-03-26 | 27FS+4w, 29SS+8w |
| 31 |  | Equipment ready for factory acceptance | 0w | 2027-03-26 | 2027-03-26 | 29, 30 |
| 32 |  | Blank cards, first production run: qualification and factory acceptance stock | 7w | 2027-02-15 | 2027-04-02 | 27, 120 |
| 33 |  | Qualification cards delivered to the equipment factory | 0w | 2027-04-09 | 2027-04-09 | 32FS+1w |
| 34 |  | Factory acceptance test procedure issued to NRB for approval | 0w | 2027-04-09 | 2027-04-09 | 27FS+8w |
| 35 |  | Blank cards, first delivery of not less than 500,000 | 5w | 2027-04-05 | 2027-05-07 | 32 |
| 36 |  | Blank cards, remaining 1,500,000 in shipments of not less than 500,000 | 5w | 2027-05-10 | 2027-06-11 | 35 |
| 37 |  | ICT infrastructure manufacture and delivery, ordered at mobilization | 11w | 2027-01-18 | 2027-04-02 | 10 |
| 38 |  | Application build: components defined by the Technical Requirements, from design start | 12w | 2027-01-18 | 2027-04-09 | 8 |
| 39 |  | Application build: NRIS-facing and signing components, after design approval | 10w | 2027-02-15 | 2027-04-23 | 27, 121, 122 |
| 40 |  | NRIS interface simulators from the Interface Control Documents | 2w | 2027-02-15 | 2027-02-26 | 27 |
| 41 |  | Production side of the NRIS interface, tested against simulators | 8w | 2027-03-01 | 2027-04-23 | 40 |
| 42 |  | Clearing agent appointed | 0w | 2027-03-26 | 2027-03-26 | 27FS+6w |
| 43 |  | Customs documentation prepared | 4w | 2027-03-29 | 2027-04-23 | 42 |
| 44 | 6 | **4 Facility renovation (facility works)** | 12w | 2027-02-15 | 2027-05-07 |  |
| 45 |  | Mobilization and site establishment of the facility works | 1w | 2027-02-15 | 2027-02-19 | 27, 26, 15 |
| 46 |  | Health, safety, environmental and waste management of the works | 12w | 2027-02-15 | 2027-05-07 | 45SS |
| 47 |  | Civil and architectural works: partitions, secure areas and physical reinforcement | 5w | 2027-02-15 | 2027-03-19 | 45SS |
| 48 |  | Server room, built first: power, UPS, precision cooling, clean agent suppression, access control, racks and cabling | 5w | 2027-03-01 | 2027-04-02 | 47SS+2w |
| 49 |  | Server room tested and commissioned | 1w | 2027-04-05 | 2027-04-09 | 48, 125 |
| 50 |  | Server room handed over: sealed, powered through its UPS, cooled and cabled | 0w | 2027-04-09 | 2027-04-09 | 49 |
| 51 |  | Electrical installation: distribution boards, dedicated circuits, protection, earthing, lightning protection, emergency lighting | 8w | 2027-02-22 | 2027-04-16 | 47SS+1w |
| 52 |  | HVAC and environmental control: air conditioning, ventilation, humidity control, air filtration and sensors | 7w | 2027-03-08 | 2027-04-23 | 47SS+3w |
| 53 |  | Fire detection, alarm and suppression systems | 5w | 2027-03-15 | 2027-04-16 | 47SS+4w |
| 54 |  | Structured cabling, network cabinets, outlets and labelling | 5w | 2027-03-15 | 2027-04-16 | 47SS+4w |
| 55 |  | Physical security systems: access control, CCTV and intrusion detection | 5w | 2027-03-22 | 2027-04-23 | 47 |
| 56 |  | Secure blank card store, sized for 2,000,000 cards | 6w | 2027-03-22 | 2027-04-30 | 47 |
| 57 |  | Finishes and fit-out: ceilings, floors, doors, furniture, workstations, quality control and consumables stations | 4w | 2027-04-05 | 2027-04-30 | 47FS+2w |
| 58 |  | Facility systems tested and commissioned, including pre-commissioning tests 2 and 3 (electrical power, environmental systems) | 2w | 2027-04-19 | 2027-04-30 | 51, 53, 52FF+1w, 55FF+1w, 54FF+2w |
| 59 |  | Readiness inspection of the production floor | 1w | 2027-05-03 | 2027-05-07 | 58, 57, 56 |
| 60 |  | Production floor ready for installation | 0w | 2027-05-07 | 2027-05-07 | 59 |
| 61 |  | Secure blank card store ready | 0w | 2027-05-07 | 2027-05-07 | 59 |
| 62 | 7 | **5 Factory acceptance testing** | 1w | 2027-04-26 | 2027-04-30 |  |
| 63 |  | Factory acceptance of the equipment on production card stock, NRB delegation present | 1w | 2027-04-26 | 2027-04-30 | 31, 32, 33, 34, 124, 1FS+16w |
| 64 |  | Printer Control Service proven against the equipment software | 1w | 2027-04-26 | 2027-04-30 | 31, 38, 1FS+16w |
| 65 |  | NRB technical staff trained at the factory | 1w | 2027-04-26 | 2027-04-30 | 31, 1FS+16w |
| 66 |  | Successful FAT | 0w | 2027-04-30 | 2027-04-30 | 63, 64, 65 |
| 67 | 8 | **6 Shipping and customs clearance** | 8w | 2027-05-03 | 2027-06-25 |  |
| 68 |  | Shipping of the personalization and mailing equipment | 2w | 2027-05-03 | 2027-05-14 | 66 |
| 69 |  | Customs clearance and delivery to NRB | 1w | 2027-05-17 | 2027-05-21 | 68, 43, 129 |
| 70 |  | Equipment delivered on site | 0w | 2027-05-21 | 2027-05-21 | 69 |

| ID | WBS | Task | Duration | Start | Finish | Predecessors |
| --- | --- | --- | --- | --- | --- | --- |
| 71 |  | First card delivery shipped, cleared and delivered to NRB | 2w | 2027-05-10 | 2027-05-21 | 35, 129 |
| 72 |  | First card delivery on site | 0w | 2027-05-21 | 2027-05-21 | 71, 61 |
| 73 |  | Remaining card shipments cleared and delivered to NRB | 2w | 2027-06-14 | 2027-06-25 | 36, 129 |
| 74 |  | All 2,000,000 cards on site, before commissioning | 0w | 2027-06-25 | 2027-06-25 | 73 |
| 75 | 9 | **7 Installation and site acceptance testing** | 12w | 2027-04-12 | 2027-07-02 |  |
| 76 |  | ICT infrastructure delivered to site, inspected and racked | 1w | 2027-04-12 | 2027-04-16 | 37, 50 |
| 77 |  | NRB technical staff shadow installation and commissioning | 12w | 2027-04-12 | 2027-07-02 | 76SS, 126 |
| 78 |  | Platform build: application and database clusters, storage array, directory, database, security, non-production environments | 1w | 2027-04-19 | 2027-04-23 | 76 |
| 79 |  | Hardware security module installed at the primary site, key ceremony, certificate signing request to e-Government | 1w | 2027-04-19 | 2027-04-23 | 76 |
| 80 |  | Secondary environment deployed at Blantyre, its hardware security module enrolled, and replication established | 3w | 2027-04-19 | 2027-05-07 | 76, 127, 128 |
| 81 |  | Application deployed and integrated with the directory | 1w | 2027-04-26 | 2027-04-30 | 78, 38, 39 |
| 82 |  | Pre-Commissioning Test Program submitted to NRB for approval | 0w | 2027-04-30 | 2027-04-30 | 76FS+2w |
| 83 |  | Early integration with NRIS: interfaces tested as NRB delivers them | 5w | 2027-05-03 | 2027-06-04 | 81, 41, 130 |
| 84 |  | Integration with NRIS completed against NRB's delivered side | 2w | 2027-06-07 | 2027-06-18 | 133, 81, 41, 130 |
| 85 |  | Pre-commissioning tests of the ICT estate, Table A 4, 5, 8 and 13 | 2w | 2027-05-10 | 2027-05-21 | 81, 80, 82 |
| 86 |  | Performance testing of the software, and security testing | 2w | 2027-05-17 | 2027-05-28 | 81, 85SS+1w |
| 87 |  | Equipment inspected on delivery, unpacked and placed | 1w | 2027-05-24 | 2027-05-28 | 70, 60 |
| 88 |  | Equipment installed and commissioned by the manufacturer's engineers | 3w | 2027-05-24 | 2027-06-11 | 70, 60 |
| 89 |  | Critical Spare Parts List submitted to NRB for approval | 0w | 2027-06-18 | 2027-06-18 | 70FS+4w |
| 90 |  | User acceptance testing with NRIS stakeholders | 2w | 2027-06-14 | 2027-06-25 | 81, 84SS+1w |
| 91 |  | Security Operations Center integrated with NRB's Security Operations Center | 1w | 2027-06-21 | 2027-06-25 | 81, 136 |
| 92 |  | Independent penetration testing of the full deployed configuration | 1w | 2027-06-14 | 2027-06-18 | 88, 81 |
| 93 |  | Pre-commissioning tests of the equipment and integration, Table A 1, 6, 7, 9 to 12, 14 and 16 | 3w | 2027-06-14 | 2027-07-02 | 88, 82, 84FF+2w |
| 94 |  | Pilot production of 500 to 1,000 test cards, not issued to citizens | 1w | 2027-06-28 | 2027-07-02 | 88, 90, 84, 135, 72 |
| 95 |  | Installation and SAT complete | 0w | 2027-07-02 | 2027-07-02 | 85, 93, 86, 92, 94, 80 |
| 96 | 10 | **8 Training and knowledge transfer** | 5w | 2027-06-14 | 2027-07-16 |  |
| 97 |  | User training, groups one and two, one for each shift | 2w | 2027-06-21 | 2027-07-02 | 88FS+1w, 131, 1FS+24w |
| 98 |  | Technical training, NRB technical trainers co-delivering | 2w | 2027-06-28 | 2027-07-09 | 97SS+1w |
| 99 |  | Management training | 1w | 2027-06-28 | 2027-07-02 | 97SS+1w |
| 100 |  | User training, cover group, delivered by NRB trainers under observation | 2w | 2027-07-05 | 2027-07-16 | 97 |
| 101 |  | Training venues, logistics and trainee coordination | 5w | 2027-06-14 | 2027-07-16 | 1FS+23w |
| 102 |  | Facility training: facility operations, electrical, HVAC, fire and security systems, preventive maintenance, emergency procedures | 2w | 2027-07-05 | 2027-07-16 | 1FS+26w |
| 103 |  | Training completed | 0w | 2027-07-16 | 2027-07-16 | 97, 98, 99, 100, 102 |
| 104 | 11 | **9 System commissioning and performance testing** | 4w | 2027-07-05 | 2027-07-30 |  |
| 105 |  | Operational acceptance tests 1 to 12, 14 and 15 | 1w | 2027-07-05 | 2027-07-09 | 95, 74 |
| 106 |  | Sustained production stability and multi-shift operation, tests 2 and 13 | 2w | 2027-07-05 | 2027-07-16 | 95 |
| 107 |  | Operational independence, test 16 | 1w | 2027-07-12 | 2027-07-16 | 97, 98 |
| 108 |  | Final acceptance demonstration, test 17, ten working day observation | 2w | 2027-07-19 | 2027-07-30 | 105, 106, 107, 123 |
| 109 |  | System commissioned | 0w | 2027-07-30 | 2027-07-30 | 108 |
| 110 |  | Warranty and support documentation delivered | 0w | 2027-07-30 | 2027-07-30 | 108 |
| 111 | 12 | **10 Handover, go-live and closure** | 2w | 2027-08-02 | 2027-08-13 |  |
| 112 |  | As-built documentation, prepared progressively from week 27, finalized | 2w | 2027-08-02 | 2027-08-13 | 109 |
| 113 |  | Transfer of Security Operations Center operation to NRB | 2w | 2027-08-02 | 2027-08-13 | 109, 91 |
| 114 |  | Stabilization: resident engineers on every shift, daily review with NRB | 2w | 2027-08-02 | 2027-08-13 | 109, 137 |
| 115 |  | Facility as-built drawings, test reports, manuals, warranties and maintenance schedules delivered | 2w | 2027-08-02 | 2027-08-13 | 109 |
| 116 |  | Full handover and go-live | 0w | 2027-08-13 | 2027-08-13 | 112, 113, 114, 115 |
| 117 | 13 | **Dependencies on the Purchaser and other parties** | 24w | 2027-01-11 | 2027-06-25 |  |
| 118 |  | NRIS documentation received (NRB) | 0w | 2027-01-08 | 2027-01-08 | 1FS+1w |
| 119 |  | Access to the NRIS test environment for profiling (NRB) | 0w | 2027-01-15 | 2027-01-15 | 1FS+2w |
| 120 |  | Card design decisions (NRB) | 0w | 2027-02-05 | 2027-02-05 | 1FS+5w |
| 121 |  | QR code specification (NRB) | 0w | 2027-02-05 | 2027-02-05 | 1FS+5w |
| 122 |  | Certificate profile and signing request procedure (e-Government) | 0w | 2027-02-05 | 2027-02-05 | 1FS+5w |
| 123 |  | Observation period for the final acceptance demonstration agreed (NRB) | 0w | 2027-02-05 | 2027-02-05 | 1FS+5w |
| 124 |  | Factory acceptance delegation nominated (NRB) | 0w | 2027-03-19 | 2027-03-19 | 1FS+11w |
| 125 |  | Dedicated electrical connection to the facility live (NRB) | 0w | 2027-03-26 | 2027-03-26 | 1FS+12w |
| 126 |  | Technical trainees nominated (NRB) | 0w | 2027-04-09 | 2027-04-09 | 1FS+14w |
| 127 |  | Government Wide Area Network provisioned (NRB, e-Government) | 0w | 2027-04-16 | 2027-04-16 | 1FS+15w |
| 128 |  | Access, floor space, power and cooling at the Blantyre data center (NRB) | 0w | 2027-04-16 | 2027-04-16 | 1FS+15w |
| 129 |  | Purchaser documents for customs clearance (NRB) | 0w | 2027-04-23 | 2027-04-23 | 1FS+16w |
| 130 |  | Connectivity from the facility to the NRIS test environment (NRB) | 0w | 2027-04-30 | 2027-04-30 | 1FS+17w |
| 131 |  | User trainees nominated (NRB) | 0w | 2027-05-14 | 2027-05-14 | 1FS+19w |
| 132 |  | NRIS side of the interface (NRB developers) | 16w | 2027-02-15 | 2027-06-04 | 27, 19 |
| 133 |  | NRIS side of the interface ready for integration (NRB) | 0w | 2027-06-04 | 2027-06-04 | 132 |
| 134 |  | Document Signer certificate issue (e-Government) | 3w | 2027-04-26 | 2027-05-14 | 79 |
| 135 |  | Document Signer certificate issued (e-Government) | 0w | 2027-05-14 | 2027-05-14 | 134 |
| 136 |  | NRB Security Operations Center integration details (NRB) | 0w | 2027-06-18 | 2027-06-18 | 1FS+24w |
| 137 |  | Remote support access arranged (NRB, e-Government) | 0w | 2027-06-25 | 2027-06-25 | 1FS+25w |

## Version 2 (saved 2026-10-08)

Note of the change: Keep the programme's durations when Project imports it

Last finish stays 2027-08-13.

Changed:

| ID | Task | Other |
| --- | --- | --- |
| 3 | Project management, progress reporting and single point of contact with NRB | resources Inkript → none |
| 4 | Coordination with end users and government stakeholders in Malawi | resources RME → none |
| 6 | Mobilize the Information System team | resources Inkript → none |
| 7 | Confirm Purchaser inputs and baseline the schedule | resources Inkript → none |
| 8 | Discovery: NRIS documentation, current process and site walkthroughs | resources Inkript → none |
| 9 | Site survey and assessment of the existing facility: dimensions, structure, electrical load and environment | resources RME → none |
| 10 | Order long-lead equipment and ICT infrastructure | resources Inkript → none |
| 11 | Recommended trainee numbers and prerequisites issued to NRB | resources Inkript → none |
| 13 | Discovery: NRIS test data profiling and Discovery Report | resources Inkript → none |
| 14 | ICT Site Preparation Guide | resources Inkript → none |
| 15 | ICT Site Preparation Guide issued to the facility works | resources Inkript → none |
| 16 | Network requirements for the Government Wide Area Network | resources Inkript → none |
| 17 | High-Level Design | resources Inkript → none |
| 18 | Low-Level Design | resources Inkript → none |
| 19 | Interface Control Documents, agreed with NRB developers | resources Inkript; NRB developers → none |
| 20 | Security Design Documentation and certificate profile with e-Government | resources Inkript; e-Government → none |
| 21 | Card layout and card identifier, joint redesign with NRB | resources Inkript; Card manufacturer → none |
| 22 | Future-state processes and draft Standard Operating Procedures | resources Inkript → none |
| 23 | Facility design: architectural, electrical and mechanical drawings, layout plans, power and cooling design, bill of quantities | resources RME → none |
| 24 | Design submitted for approval | resources Inkript; RME → none |
| 25 | Design review with NRB | resources NRB; Inkript → none |
| 26 | Statutory approval of the structural and electrical designs, coordinated by NRB | resources NRB; RME → none |
| 27 | Detailed Design Approval | resources NRB → none |
| 29 | Equipment manufacture, started on order: two personalization and two mailing systems | resources Equipment manufacturer → none |
| 30 | Options fixed at design approval fitted to the equipment | resources Equipment manufacturer → none |
| 31 | Equipment ready for factory acceptance | resources Equipment manufacturer → none |
| 32 | Blank cards, first production run: qualification and factory acceptance stock | resources Card manufacturer → none |
| 33 | Qualification cards delivered to the equipment factory | resources Card manufacturer → none |
| 34 | Factory acceptance test procedure issued to NRB for approval | resources Inkript → none |
| 35 | Blank cards, first delivery of not less than 500,000 | resources Card manufacturer → none |
| 36 | Blank cards, remaining 1,500,000 in shipments of not less than 500,000 | resources Card manufacturer → none |
| 37 | ICT infrastructure manufacture and delivery, ordered at mobilization | resources Inkript → none |
| 38 | Application build: components defined by the Technical Requirements, from design start | resources Inkript → none |
| 39 | Application build: NRIS-facing and signing components, after design approval | resources Inkript → none |
| 40 | NRIS interface simulators from the Interface Control Documents | resources Inkript → none |
| 41 | Production side of the NRIS interface, tested against simulators | resources Inkript → none |
| 42 | Clearing agent appointed | resources RME → none |
| 43 | Customs documentation prepared | resources RME → none |
| 45 | Mobilization and site establishment of the facility works | resources RME → none |
| 46 | Health, safety, environmental and waste management of the works | resources RME → none |
| 47 | Civil and architectural works: partitions, secure areas and physical reinforcement | resources RME → none |
| 48 | Server room, built first: power, UPS, precision cooling, clean agent suppression, access control, racks and cabling | resources RME → none |
| 49 | Server room tested and commissioned | resources RME → none |
| 50 | Server room handed over: sealed, powered through its UPS, cooled and cabled | resources RME → none |
| 51 | Electrical installation: distribution boards, dedicated circuits, protection, earthing, lightning protection, emergency lighting | resources RME → none |
| 52 | HVAC and environmental control: air conditioning, ventilation, humidity control, air filtration and sensors | resources RME → none |
| 53 | Fire detection, alarm and suppression systems | resources RME → none |
| 54 | Structured cabling, network cabinets, outlets and labelling | resources RME → none |
| 55 | Physical security systems: access control, CCTV and intrusion detection | resources RME → none |
| 56 | Secure blank card store, sized for 2,000,000 cards | resources RME → none |
| 57 | Finishes and fit-out: ceilings, floors, doors, furniture, workstations, quality control and consumables stations | resources RME → none |
| 58 | Facility systems tested and commissioned, including pre-commissioning tests 2 and 3 (electrical power, environmental systems) | resources RME → none |
| 59 | Readiness inspection of the production floor | resources RME; Inkript → none |
| 60 | Production floor ready for installation | resources RME → none |
| 61 | Secure blank card store ready | resources RME → none |
| 63 | Factory acceptance of the equipment on production card stock, NRB delegation present | resources Equipment manufacturer; Inkript → none |
| 64 | Printer Control Service proven against the equipment software | resources Inkript → none |
| 65 | NRB technical staff trained at the factory | resources Equipment manufacturer → none |
| 66 | Successful FAT | resources Inkript → none |
| 68 | Shipping of the personalization and mailing equipment | resources Inkript → none |
| 69 | Customs clearance and delivery to NRB | resources RME → none |
| 70 | Equipment delivered on site | resources RME → none |
| 71 | First card delivery shipped, cleared and delivered to NRB | resources Inkript; RME → none |
| 72 | First card delivery on site | resources RME → none |
| 73 | Remaining card shipments cleared and delivered to NRB | resources Inkript; RME → none |
| 74 | All 2,000,000 cards on site, before commissioning | resources RME → none |
| 76 | ICT infrastructure delivered to site, inspected and racked | resources RME; Inkript → none |
| 77 | NRB technical staff shadow installation and commissioning | resources NRB → none |
| 78 | Platform build: application and database clusters, storage array, directory, database, security, non-production environments | resources Inkript → none |
| 79 | Hardware security module installed at the primary site, key ceremony, certificate signing request to e-Government | resources Inkript → none |

| ID | Task | Other |
| --- | --- | --- |
| 80 | Secondary environment deployed at Blantyre, its hardware security module enrolled, and replication established | resources Inkript → none |
| 81 | Application deployed and integrated with the directory | resources Inkript → none |
| 82 | Pre-Commissioning Test Program submitted to NRB for approval | resources Inkript → none |
| 83 | Early integration with NRIS: interfaces tested as NRB delivers them | resources Inkript; NRB developers → none |
| 84 | Integration with NRIS completed against NRB's delivered side | resources Inkript; NRB developers → none |
| 85 | Pre-commissioning tests of the ICT estate, Table A 4, 5, 8 and 13 | resources Inkript → none |
| 86 | Performance testing of the software, and security testing | resources Inkript → none |
| 87 | Equipment inspected on delivery, unpacked and placed | resources Inkript; RME → none |
| 88 | Equipment installed and commissioned by the manufacturer's engineers | resources Equipment manufacturer → none |
| 89 | Critical Spare Parts List submitted to NRB for approval | resources Inkript → none |
| 90 | User acceptance testing with NRIS stakeholders | resources Inkript; NRB → none |
| 91 | Security Operations Center integrated with NRB's Security Operations Center | resources Inkript → none |
| 92 | Independent penetration testing of the full deployed configuration | resources Independent penetration tester → none |
| 93 | Pre-commissioning tests of the equipment and integration, Table A 1, 6, 7, 9 to 12, 14 and 16 | resources Inkript → none |
| 94 | Pilot production of 500 to 1,000 test cards, not issued to citizens | resources Inkript → none |
| 95 | Installation and SAT complete | resources Inkript → none |
| 97 | User training, groups one and two, one for each shift | resources Inkript → none |
| 98 | Technical training, NRB technical trainers co-delivering | resources Inkript → none |
| 99 | Management training | resources Inkript → none |
| 100 | User training, cover group, delivered by NRB trainers under observation | resources NRB → none |
| 101 | Training venues, logistics and trainee coordination | resources RME → none |
| 102 | Facility training: facility operations, electrical, HVAC, fire and security systems, preventive maintenance, emergency procedures | resources RME → none |
| 103 | Training completed | resources Inkript → none |
| 105 | Operational acceptance tests 1 to 12, 14 and 15 | resources NRB; Inkript → none |
| 106 | Sustained production stability and multi-shift operation, tests 2 and 13 | resources NRB; Inkript → none |
| 107 | Operational independence, test 16 | resources NRB → none |
| 108 | Final acceptance demonstration, test 17, ten working day observation | resources NRB; Inkript → none |
| 109 | System commissioned | resources Inkript → none |
| 110 | Warranty and support documentation delivered | resources Inkript → none |
| 112 | As-built documentation, prepared progressively from week 27, finalized | resources Inkript → none |
| 113 | Transfer of Security Operations Center operation to NRB | resources Inkript → none |
| 114 | Stabilization: resident engineers on every shift, daily review with NRB | resources Inkript → none |
| 115 | Facility as-built drawings, test reports, manuals, warranties and maintenance schedules delivered | resources RME → none |
| 116 | Full handover and go-live | resources Inkript; RME → none |
| 118 | NRIS documentation received (NRB) | resources NRB → none |
| 119 | Access to the NRIS test environment for profiling (NRB) | resources NRB → none |
| 120 | Card design decisions (NRB) | resources NRB → none |
| 121 | QR code specification (NRB) | resources NRB → none |
| 122 | Certificate profile and signing request procedure (e-Government) | resources e-Government → none |
| 123 | Observation period for the final acceptance demonstration agreed (NRB) | resources NRB → none |
| 124 | Factory acceptance delegation nominated (NRB) | resources NRB → none |
| 125 | Dedicated electrical connection to the facility live (NRB) | resources NRB → none |
| 126 | Technical trainees nominated (NRB) | resources NRB → none |
| 127 | Government Wide Area Network provisioned (NRB, e-Government) | resources NRB; e-Government → none |
| 128 | Access, floor space, power and cooling at the Blantyre data center (NRB) | resources NRB → none |
| 129 | Purchaser documents for customs clearance (NRB) | resources NRB → none |
| 130 | Connectivity from the facility to the NRIS test environment (NRB) | resources NRB → none |
| 131 | User trainees nominated (NRB) | resources NRB → none |
| 132 | NRIS side of the interface (NRB developers) | resources NRB developers → none |
| 133 | NRIS side of the interface ready for integration (NRB) | resources NRB developers → none |
| 134 | Document Signer certificate issue (e-Government) | resources e-Government → none |
| 135 | Document Signer certificate issued (e-Government) | resources e-Government → none |
| 136 | NRB Security Operations Center integration details (NRB) | resources NRB → none |
| 137 | Remote support access arranged (NRB, e-Government) | resources NRB; e-Government → none |

## Version 3 (saved 2026-10-08)

Note of the change: Merge pull request #8 from charkhaw/claude/tender-gates-21dej5

Last finish stays 2027-08-13.

Changed:

| ID | Task | Predecessors |
| --- | --- | --- |
| 3 | Project management, progress reporting and single point of contact with NRB | 1 → none |
| 4 | Coordination with end users and government stakeholders in Malawi | 1 → none |
| 6 | Mobilize the Information System team | 1 → none |
| 7 | Confirm Purchaser inputs and baseline the schedule | 1 → none |
| 8 | Discovery: NRIS documentation, current process and site walkthroughs | 1 → none |
| 9 | Site survey and assessment of the existing facility: dimensions, structure, electrical load and environment | 1 → none |

## Version 4 (saved 2026-10-09)

Note of the change: Merge pull request #9 from charkhaw/claude/tender-gates-21dej5

Last finish stays 2027-08-13.

Changed:

| ID | Task | Predecessors |
| --- | --- | --- |
| 3 | Project management, progress reporting and single point of contact with NRB | none → 1 |
| 4 | Coordination with end users and government stakeholders in Malawi | none → 1 |
| 6 | Mobilize the Information System team | none → 1 |
| 7 | Confirm Purchaser inputs and baseline the schedule | none → 1 |
| 8 | Discovery: NRIS documentation, current process and site walkthroughs | none → 1 |
| 9 | Site survey and assessment of the existing facility: dimensions, structure, electrical load and environment | none → 1 |
